# 立项

Schedule from a web Gantt chart, 2024-05-17 to 2024-08-23.
Saturdays and Sundays are off

## Schedule

| ID | WBS | Task | Duration | Start | Finish | Predecessors | Status |
| --- | --- | --- | --- | --- | --- | --- | --- |
| 2 | 1 | 党委会汇报审议 | 1d | 2024-05-17 | 2024-05-17 |  | waiting |
| 3 | 2 | 发改投资项目赋码备案 | 1d | 2024-05-20 | 2024-05-20 | 2 | waiting |
| 4 | 3 | 管线规划路由咨询委托（直接委托） | 1d | 2024-05-21 | 2024-05-21 | 3 | waiting |
| 5 | 4 | 管线规划路由方案编制评审 | 15d | 2024-05-22 | 2024-06-11 | 4 | waiting |
| 6 | 5 | 补水可行性专项咨询委托（中介超市） | 5d | 2024-05-21 | 2024-05-27 | 3 | waiting |
| 7 | 6 | 补水可行性专项咨询编制评审 | 7d | 2024-05-28 | 2024-06-05 | 6 | waiting |
| 8 | 7 | 可研委托（中介超市） | 5d | 2024-05-21 | 2024-05-27 | 3 | waiting |
| 9 | 8 | 可研编制评审 | 14d | 2024-05-28 | 2024-06-14 | 8 | waiting |
| 10 | 9 | 可研报批 | 5d | 2024-06-17 | 2024-06-21 | 9, 7 | waiting |
| 11 | 10 | 招标代理及造价服务委托（中介超市） | 5d | 2024-05-21 | 2024-05-27 | 3 | waiting |
| 12 | 11 | 设计招标文件编制 | 5d | 2024-06-17 | 2024-06-21 | 11, 9 | waiting |
| 13 | 12 | 设计招标 | 25d | 2024-06-24 | 2024-07-26 | 12 | waiting |
| 14 | 13 | 初步设计编制评审 | 20d | 2024-07-29 | 2024-08-23 | 13 | waiting |
| 15 | 14 | 概算审核 | 15d | 2024-05-17 | 2024-06-06 |  | waiting |
| 16 | 15 | 施工图编制 | 15d | 2024-05-17 | 2024-06-06 |  | waiting |
| 17 | 16 | 施工图审核 | 10d | 2024-05-17 | 2024-05-30 |  | waiting |
| 18 | 17 | 招标控制价编制 | 1d | 2024-05-17 | 2024-05-17 |  | waiting |
